Task ID,Task Name,Start Date,End Date,Duration (Days),Dependencies,Assigned To,Priority,Status,Phase
T001,Project Kickoff & Requirements Analysis,2025-07-01,2025-07-03,3,-,Project Manager,High,Not Started,Setup
T002,Technical Architecture Design,2025-07-01,2025-07-05,5,T001,Tech Lead,High,Not Started,Setup
T003,Database Schema Design,2025-07-03,2025-07-07,5,T002,Backend Dev,High,Not Started,Setup
T004,Development Environment Setup,2025-07-04,2025-07-08,5,T002,DevOps,Medium,Not Started,Setup
T005,API Documentation Planning,2025-07-07,2025-07-10,4,T003,Tech Lead,Medium,Not Started,Setup
T006,UI/UX Design System Creation,2025-07-08,2025-07-14,7,T001,UI/UX Designer,High,Not Started,Setup
T007,Git Repository Setup & CI/CD Pipeline,2025-07-09,2025-07-11,3,T004,DevOps,Medium,Not Started,Setup
T008,User Authentication Module,2025-07-15,2025-07-19,5,"T003, T007",Backend Dev,High,Not Started,Backend
T009,User Management Module,2025-07-17,2025-07-22,6,T008,Backend Dev,High,Not Started,Backend
T010,Skills Management Module,2025-07-20,2025-07-25,6,T009,Backend Dev,High,Not Started,Backend
T011,Session Management Module,2025-07-22,2025-07-28,7,T010,Backend Dev,High,Not Started,Backend
T012,Exchange Requests Module,2025-07-25,2025-07-30,6,T011,Backend Dev,High,Not Started,Backend
T013,Exchange Sessions Module,2025-07-28,2025-08-02,6,T012,Backend Dev,High,Not Started,Backend
T014,Messaging Module,2025-07-30,2025-08-04,6,T013,Backend Dev,Medium,Not Started,Backend
T015,Notifications Module,2025-08-01,2025-08-04,4,T014,Backend Dev,Medium,Not Started,Backend
T016,Python API Framework Setup,2025-07-22,2025-07-24,3,T004,Python Dev,High,Not Started,Python
T017,LLM Integration Setup,2025-07-24,2025-07-28,5,T016,Python Dev,High,Not Started,Python
T018,Skill Metadata Generation,2025-07-28,2025-08-01,5,"T017, T010",Python Dev,High,Not Started,Python
T019,Content Recommendation Engine,2025-08-01,2025-08-05,5,T018,Python Dev,Medium,Not Started,Python
T020,AI-Powered Matching Algorithm,2025-08-03,2025-08-08,6,T019,Python Dev,High,Not Started,Python
T021,React Project Setup & Routing,2025-07-29,2025-07-31,3,"T006, T007",Frontend Dev,High,Not Started,Frontend
T022,Authentication Pages (Login/Register),2025-07-31,2025-08-03,4,"T021, T008",Frontend Dev,High,Not Started,Frontend
T023,User Dashboard,2025-08-03,2025-08-07,5,"T022, T009",Frontend Dev,High,Not Started,Frontend
T024,Skills Management Pages,2025-08-05,2025-08-09,5,"T023, T010",Frontend Dev,High,Not Started,Frontend
T025,Session Management Pages,2025-08-07,2025-08-11,5,"T024, T011",Frontend Dev,High,Not Started,Frontend
T026,Exchange Requests Pages,2025-08-09,2025-08-13,5,"T025, T012",Frontend Dev,High,Not Started,Frontend
T027,Exchange Sessions Pages,2025-08-11,2025-08-15,5,"T026, T013",Frontend Dev,High,Not Started,Frontend
T028,Messaging Interface,2025-08-13,2025-08-15,3,"T027, T014",Frontend Dev,Medium,Not Started,Frontend
T029,API Integration Testing,2025-08-12,2025-08-14,3,"T015, T020, T028",QA Engineer,High,Not Started,Testing
T030,Frontend-Backend Integration,2025-08-14,2025-08-16,3,T029,Full Stack Dev,High,Not Started,Testing
T031,Python API Integration,2025-08-15,2025-08-17,3,T030,Full Stack Dev,High,Not Started,Testing
T032,End-to-End Testing,2025-08-16,2025-08-19,4,T031,QA Engineer,High,Not Started,Testing
T033,Performance Testing,2025-08-17,2025-08-20,4,T032,DevOps,Medium,Not Started,Testing
T034,Security Testing,2025-08-18,2025-08-21,4,T033,Security Engineer,High,Not Started,Testing
T035,Bug Fixes & Optimization,2025-08-19,2025-08-22,4,T034,All Developers,High,Not Started,Testing
T036,Documentation Finalization,2025-08-20,2025-08-22,3,T035,Tech Writer,Medium,Not Started,Testing
